Schedule from OmniPlan.
Project start 2016-04-23

## Resources

| Resource | Group |
| --- | --- |
| Resource 1 | staff |
| Equipment 1 | equipment |
| Material 1 | material |
| Group 1 | group |
| Evan | staff |
| Brad | staff |
| Sarah | staff |
| Bill | staff |

## Schedule

| ID | WBS | Task | Type | Predecessors | Complete | Constraint | Resources | Work | Actual work |
| --- | --- | --- | --- | --- | --- | --- | --- | --- | --- |
| 1 | 1 | **Offload unwanted or time-consuming services/responsibilities.** |  |  |  | start no earlier than 2016-04-25 |  |  |  |
| 2 | 1.1 | Decommission old/unused hardware. |  |  | 100% | start no earlier than 2016-05-10 |  | 536h | 536h |
| 3 | 1.2 | Automate patching procedure |  |  | 100% | start no earlier than 2016-05-04 | Evan | 40h | 40h |
| 4 | 1.3 | Migrate CGA hardware out of data center |  |  | 70% | start no earlier than 2016-05-04 |  | 1728h | 1209.6h |
| 5 | 1.4 | Migrate/remove Redmine |  |  | 100% |  |  | 2h | 2h |
| 6 | 1.5 | **Migrate RT to secondary provider or utilize RT engineers to upgrade our installation. Investigate providers.** |  |  |  |  |  |  |  |
| 7 | 1.5.1 | Research which provider or hosted solution is best. |  |  | 100% | start no earlier than 2016-07-29 | Evan | 40h | 40h |
| 8 | 1.5.2 | Work with provider to upgrade and maintain RT installation. |  | 7 | 80% | start no earlier than 2016-08-05 | Evan | 840.25h | 672.2h |
| 9 | 1.5.3 | Make an inventory of all of our ‘RT’ scrips and discard those which are no longer necessary for migration. |  |  | 100% | start no earlier than 2016-07-29 | Evan | 40h | 40h |
| 10 | 1.6 | **Migrate tape backup archive to BackBlaze.** |  |  |  | start no earlier than 2016-04-25 |  |  |  |
| 11 | 1.6.1 | Get BackBlaze certified with OGC/HUIT |  |  | 100% | start no earlier than 2016-07-29 | Evan | 8h | 8h |
| 12 | 1.6.2 | Buy and install host which performs backups |  |  | 100% | start no earlier than 2016-08-01 | Sarah | 8h | 8h |
| 13 | 1.6.3 | Work with BackBlaze to find the most efficient way of pushing this data |  |  | 100% | start no earlier than 2016-04-28 | Evan | 8h | 8h |
| 14 | 1.6.4 | Use HashBackup |  |  | 100% | start no earlier than 2016-08-01 | Evan | 40.25h | 40.25h |
| 15 | 1.6.5 | Measure performance and reliability of process; backup data to tapes and BackBlaze |  | 14 | 100% | start no earlier than 2016-05-02 | Evan | 40h | 40h |
| 16 | 1.6.6 | Find out what we need to backup, and when |  |  | 100% | start no earlier than 2016-08-01 | Sarah | 8h | 8h |
| 17 | 1.6.7 | Re-write documentation on backing up user, project data, and restoration to conform to BackBlaze backup system. |  |  | 100% | start no earlier than 2016-11-20 | Evan | 160h | 160h |
| 18 | 1.7 | **Migrate all web services, except ShinyServer, to Heroku, including DVN.** |  |  |  |  |  |  |  |
| 19 | 1.7.1 | Migrate and decommission Jenkins, reuse. |  |  | 100% | start no earlier than 2016-07-29 | Evan | 40h | 40h |
| 20 | 1.7.2 | Work with Salesforce/Heroku to build an HMDC Heroku Enterprise contract |  |  | 100% | start no earlier than 2016-07-29 | Evan | 40h | 40h |
| 21 | 1.7.3 | Create a basic-enterprise HMDC Heroku account with some limits. |  |  | 100% | start no earlier than 2016-08-01 | Evan | 8h | 8h |
| 22 | 1.7.4 | Give Raman access to a basic Heroku account and ask him to deploy Dataverse Network to its and its components. |  |  | 100% | start no earlier than 2016-07-29 | Evan | 16h | 16h |
| 23 | 1.7.5 | Certify Heroku with OGC |  |  | 100% | start no earlier than 2016-05-04 | Evan | 8h | 8h |
| 24 | 1.7.6 | **Create a Heroku account and deploy Latanya’s PHP application to it.** |  |  |  |  |  |  |  |
| 25 | 1.7.6.1 | If successful, work with Latanya to migrate one of her websites entirely to Heroku to test the viability of this environment. |  |  | 100% | start no earlier than 2016-07-29 | Evan | 40h | 40h |
| 26 | 1.7.7 | Work with Heroku to determine enterprise pricing for the amount of web sites we host. |  |  | 100% | start no earlier than 2016-07-29 | Evan | 24h | 24h |
| 27 | 1.7.8 | Determine the best method to migrate our users permissions to Heroku: How much CPU time should they get? How much memory should they get? Should they be allowed to provision as many websites as they want, etc. |  |  | 100% | start no earlier than 2016-07-29 | Evan | 40h | 40h |
| 28 | 1.7.9 | Determine the best method for file storage on Heroku — using an S3 bucket, connecting to our local NetApp, etc. |  |  | 100% | start no earlier than 2016-07-29 | Evan | 40h | 40h |
| 29 | 1.7.10 | Work with Gary and Cris to decide how much support we provide for users in the Heroku environment: Do we help them setup GitHub repositories? Do we help them with basic PHP programming fundamentals, permissions? |  |  | 100% | start no earlier than 2016-07-29 | Brad | 24h | 24h |
| 30 | 1.7.11 | Migrate all sites to Heroku. Provide a deadline. |  |  | 75% |  | Evan | 1776h | 1332h |
| 31 | 1.7.12 | Ask DVN to migrate their entire toolchain to the Cloud. Provide a deadline. |  |  | 60% | start no earlier than 2016-08-01 | Evan | 1224h | 734.4h |
| 32 | 2 | Work with Microsoft to build RCE-in-Azure launching pad |  |  | 100% | start no earlier than 2016-04-27 | Evan | 1273.75h | 1273.75h |
| 33 | 3 | AWS/AZURE/Cloud migration preparations complete | milestone | 1, 32 |  | start no earlier than 2016-12-12 |  |  |  |
| 34 | 4 | Test RCE/Azure PoC with a small user-base |  |  |  | start no earlier than 2017-01-01 |  | 80h |  |

Notes:
- 5: DVN will probably require a data backup.
- 6: RT provides both a hosted solution or you can hire a contractor to duplicate and upgrade your service. We should investigate which is preferable.
- 8: This would hopefully require little effort on our part.
- 18: Heroku is a layer on top of AWS which provides point-and-click deployment of PHP, Python, Ruby, and Node.JS applications. Requires basic familiarity with Github.
- 22: This should actually give them what they want — latest Python, automatically provisioning NGINX, etc.
- 24: Ask Latanya which PHP application we can migrate for testing — one that contains no important/sensitive data. Take this PHP application from /nfs/www and migrate it to Heroku.
- 26: Collect the amount of websites we host. The amount of PHP and/or Python websites we host does not account for very much.
- 29: We prefer a self-service model. If possible, make users perform the majority of the work, apart from initial account setup.
- 31: We may need to provision a Jenkins instance for them, although this may be provided by Heroku as well.

| ID | WBS | Task | Type | Predecessors | Complete | Constraint | Resources | Work | Actual work |
| --- | --- | --- | --- | --- | --- | --- | --- | --- | --- |
| 35 | 5 | **Re-design RCE/Azure to support multi-cloud submission** |  | 34 |  | start no earlier than 2017-01-01 |  |  |  |
| 36 | 5.1 | Use docker containers for applications rather than stored images, export with XPRA. |  |  |  | start no earlier than 2016-12-12 | Evan | 192h |  |
| 37 | 5.2 | Build REDIS queue and worker to distribute tasks to multiple clouds |  |  |  | start no earlier than 2017-02-16 | Evan | 168h |  |
| 38 | 5.3 | Build docker images for HTCondor negotiator, collector, and schedd for AWS with redundancy |  |  |  | start no earlier than 2017-02-16 | Evan | 168h |  |
| 39 | 5.4 | Redesign RCE/Azure application to submit jobs to redis queue and manage jobs through the redis queue and associated workers |  |  |  | start no earlier than 2017-03-16 | Evan | 176h |  |
| 40 | 5.5 | Scale NodeJS web service appropriately using npm-cluster/multiple workers |  |  |  | start no earlier than 2017-05-16 | Evan | 192h |  |
| 41 | 5.6 | Implement tests for NodeJS code |  |  |  | start no earlier than 2017-06-16 | Evan | 168h |  |
| 42 | 5.7 | Use Terraform to create abstract cloud configurations for AWS and Azure |  |  |  | start no earlier than 2016-12-12 | Evan | 352h |  |
| 43 | 5.8 | Use Packer to create rudimentary disk images (if necessary), although cloud-init should handle the entire process |  |  |  | start no earlier than 2016-12-12 | Evan | 8h |  |
| 44 | 5.9 | Auto-build and test docker images |  |  |  | start no earlier than 2017-03-16 | Evan | 176h |  |
| 45 | 5.10 | Implement monitoring for RCE Cloud |  |  |  | start no earlier than 2017-06-16 | Evan | 264h |  |
| 46 | 5.11 | Allow mounting of home directories - CI3/CI4 to Azure and CI3/CI4 to Amazon |  |  |  | start no earlier than 2017-05-01 | Evan | 192h |  |
| 47 | 5.12 | Pare down and migrate Puppet/Capistrano to GitHub with best practices |  |  |  | start no earlier than 2016-12-12 | Evan | 1136h |  |
| 48 | 6 | RCE Cloud public beta release | milestone | 34, 35 |  | start no earlier than 2017-08-01 |  |  |  |
| 49 | 7 | Resolve any outstanding bugs acquired from BETA release |  | 48 |  | start no earlier than 2016-12-12 |  | 344h |  |
| 50 | 8 | Begin to migrate users to RCE Cloud |  | 49 |  | start no earlier than 2017-10-01 |  | 184h |  |
| 51 | 9 | **Migrate/upgrade essential services.** |  | 1, 33 |  |  |  |  |  |
| 52 | 9.1 | Migrate appropriate DHCP options to Amazon DHCP |  |  | 100% | start no earlier than 2016-08-01 |  | 40h | 40h |
| 53 | 9.2 | Migrate DNS to Route 53/Azure |  |  | 100% | start no earlier than 2016-08-01 |  | 40h | 40h |
| 54 | 9.3 | **Upgrade/migrate LDAP to CentOS 6/7/Amazon** |  |  |  | start no earlier than 2016-08-01 |  |  |  |
| 55 | 9.3.1 | Build and test LDAP on CentOS 7/Amazon |  |  | 100% | start no earlier than 2016-05-10 |  | 8h | 8h |
| 56 | 9.3.2 | Get Amazon certified for Level 4 with Direct Connect. |  |  | 100% | start no earlier than 2016-05-10 |  | 8h | 8h |
| 57 | 10 | **Migrate most services to Cloud** |  | 33 |  | start no earlier than 2016-05-02 |  |  |  |
| 58 | 10.1 | Slowly de-commission execute nodes, sell or move to recycling. |  |  | 100% | start no earlier than 2016-07-29 | Sarah | 40h | 40h |
| 59 | 10.2 | De-commission RCE Login nodes, sell or cycle, migrate licenses to Cloud. |  |  | 100% | start no earlier than 2016-07-29 | Sarah | 40h | 40h |
| 60 | 10.3 | With all web apps migrated to Heroku, turn off and recycle www-* hosts. |  |  | 100% | start no earlier than 2016-07-29 | Sarah | 40h | 40h |
| 61 | 10.4 | Migrate pertinent fs-4 tasks to another host, turn off and recycle fs-4. |  |  | 100% | start no earlier than 2016-07-29 | Evan | 40h | 40h |
| 62 | 10.5 | With RT migrated to cloud provider, turn off RT and recycle. |  |  | 100% | start no earlier than 2016-07-29 | Sarah | 8h | 8h |

Notes:
- 54: Maybe put slave hosts in different zones? Expose via Amazon LB. We need to make sure this works for CentOS 7 as well if we go to Azure. De-password-ify LDAP and use CAS to perform password authentication.
